# lab_01_task_01

Schedule from MS Project, 2024-03-01 to 2024-07-24, status date 2024-05-08, costs in ₽, A marks actual dates.
Планирование программного проекта в MS Project
РњР“РўРЈ РёРј. Рќ. Р­. Р‘Р°СѓРјР°РЅР°
Команда разработчиков из 16 человек занимается созданием карты города на основе собственного модуля отображения. Проект должен быть завершен в течение 6 месяцев. Бюджет проекта: 50 000 рублей.

## Calendars

- Стандартный: Mon-Fri 09:00-13:00, 14:00-18:00; Sat-Sun off. Exceptions (off unless hours are given): 2024-03-08 to 2024-03-10 (Международный женский день), 2024-04-28 to 2024-05-01 (День Труда), 2024-05-09 to 2024-05-12 (День Победы), 2024-06-12 (День России).

## Resources

| Resource | Group | Rate | Cost per use |
| --- | --- | --- | --- |
| Ведущий программист | Программирование | 10 | 100 |
| Программист#1 | Программирование | 7 | 50 |
| Программист#2 | Программирование | 7 | 50 |
| Программист#3 | Программирование | 7 | 50 |
| Программист#4 | Программирование | 7 | 50 |
| Системный аналитик | Анализ | 20 | 300 |
| Художник-дизайнер | Дизайн | 8 | 70 |
| Технический писатель | Документация | 5 | 20 |
| Web-дизайнер | Internet | 7 | 50 |
| 3D аниматор | Дизайн | 8 | 70 |
| Мультимедиа-корреспондент | М-медиа | 3 | 20 |
| Наборщик данных#5 | Ввод данных | 2 | 10 |
| Наборщик данных#4 | Ввод данных | 2 | 10 |
| Наборщик данных#3 | Ввод данных | 2 | 10 |
| Наборщик данных#2 | Ввод данных | 2 | 10 |
| Наборщик данных#1 | Ввод данных | 2 | 10 |
| Сервер | Сервер | 2 |  |
| Программист-стажер | Программирование | 3 | 20 |
| Специализированное ПО | Оборудование | 5000 | 300 |
| Программист-стажер 2 | Программирование | 3 | 20 |
| Наборщик данных#6 | Ввод данных | 2 | 10 |

## Schedule

| ID | WBS | Task | Type | Duration | Start | Finish | Predecessors | Complete | Remaining | Baseline start | Baseline finish | Baseline duration | Total slack | Free slack | Resources | Work | Actual work | Cost | Baseline cost | Actual cost |
| --- | --- | --- | --- | --- | --- | --- | --- | --- | --- | --- | --- | --- | --- | --- | --- | --- | --- | --- | --- | --- |
| 1 | 1 | Начало проекта | milestone | 0w | 2024-03-01 09:00 A | 2024-03-01 09:00 A |  | 100% |  | 2024-03-01 09:00 | 2024-03-01 09:00 | 0w |  |  |  |  |  |  |  |  |
| 2 | 2 | **Создание интерфейса** |  | 72.37d | 2024-03-01 09:00 A | 2024-06-20 11:59 | 1 | 90% | 7.11d | 2024-03-01 09:00 | 2024-06-21 14:12 | 73.53d | 4.84d |  |  | 560h | 320h | 5,370 | 5,650 | 3,670 |
| 3 | 2.1 | **Разработка дизайна интерфейса** |  | 27.5d | 2024-03-01 09:00 A | 2024-04-10 13:00 A |  | 100% |  | 2024-03-01 09:00 | 2024-04-08 15:00 | 25.62d |  |  |  | 320h | 320h | 2,770 | 2,770 | 2,770 |
| 4 | 2.1.1 | Разработка 2D графических элементов |  | 3.77w | 2024-03-01 09:00 A | 2024-03-28 18:00 A |  | 100% |  | 2024-03-01 09:00 | 2024-03-25 12:00 | 3w |  |  | Художник-дизайнер | 120h | 120h | 1,030 | 1,030 | 1,030 |
| 5 | 2.1.2 | Разработка 3D графических элементов |  | 2.4w | 2024-03-01 09:00 A | 2024-03-20 11:00 A | 4SS | 100% |  | 2024-03-01 09:00 | 2024-03-18 11:00 | 2w |  |  | 3D аниматор | 80h | 80h | 710 | 710 | 710 |
| 6 | 2.1.3 | Создание заставки |  | 3w | 2024-03-20 11:00 A | 2024-04-10 13:00 A | 5 | 100% |  | 2024-03-18 11:00 | 2024-04-08 15:00 | 3w |  |  | 3D аниматор | 120h | 120h | 1,030 | 1,030 | 1,030 |
| 7 | 2.2 | Программирование интерфейса |  | 1w | 2024-06-13 11:59 | 2024-06-20 11:59 | 3, 12 |  |  | 2024-06-11 09:12 | 2024-06-21 14:12 | 1.5w | 4.84d | 0d | Программист#3; Программист#4; Программист#1; Программист#2; Программист-стажер; Программист-стажер 2 | 240h |  | 1,600 | 1,880 |  |
| 8 | 3 | **Построение базы объектов** |  | 76.46d | 2024-03-01 09:00 A | 2024-06-26 12:40 |  | 55% | 34.5d | 2024-03-25 12:00 | 2024-07-23 15:00 | 80.25d | 19.67d |  | Сервер | 5531.67h | 2723.39h | 15,624.87 | 15,346 | 9,288.67 |
| 9 | 3.1 | Анализ и построение структуры базы объектов |  | 2w | 2024-03-01 09:00 A | 2024-03-26 16:00 A |  | 100% |  | 2024-03-25 12:00 | 2024-04-08 15:00 | 2w |  |  | Системный аналитик | 80h | 80h | 1,900 | 1,900 | 1,900 |
| 10 | 3.2 | Программирование средств обработки базы объектов |  | 1.2w | 2024-03-26 16:00 A | 2024-04-03 16:00 A | 9 | 100% |  | 2024-04-08 15:00 | 2024-04-22 15:00 | 2w |  |  | Программист#3; Программист#4; Программист#2; Программист-стажер; Программист#1; Ведущий программист; Программист-стажер 2 | 240h | 240h | 1,828 | 1,830 | 1,828 |
| 11 | 3.3 | Наполнение базы объектов |  | 10.74w | 2024-04-03 16:00 A | 2024-06-26 12:40 | 10 | 41% | 6.29w | 2024-04-22 15:00 | 2024-07-23 15:00 | 12w | 19.67d |  | Наборщик данных#1; Наборщик данных#2; Наборщик данных#3; Наборщик данных#4; Наборщик данных#5; Наборщик данных#6 | 2400h | 890h | 4,860 | 4,850 | 1,830 |
| 12 | 4 | **Создание ядра GIS** |  | 67.37d | 2024-03-01 09:00 A | 2024-06-13 11:59 |  | 57% | 29.21d | 2024-03-01 09:00 | 2024-06-11 09:12 | 66.03d | 4.84d | 0d |  | 1880h | 792.72h | 14,821.14 | 18,080.05 | 7,758.8 |
| 13 | 4.1 | Анализ и проектирование ядра |  | 3.74w | 2024-03-01 09:00 A | 2024-04-03 17:26 A |  | 100% |  | 2024-03-01 09:00 | 2024-03-25 12:00 | 3w |  |  | Ведущий программист; Системный аналитик; Программист-стажер 2 | 240h | 240h | 2,662.47 | 4,000 | 2,662.47 |
| 14 | 4.2 | Создание модели ядра |  | 1.44w | 2024-04-18 11:00 A | 2024-05-02 12:32 A | 13 | 100% |  | 2024-03-25 12:00 | 2024-04-08 12:49 | 2.02w |  |  | Ведущий программист; Программист#1; Программист#2; Программист#3; Программист#4; Программист-стажер; Программист-стажер 2 | 400h | 400h | 2,848.08 | 3,336.46 | 2,848.08 |
| 15 | 4.3 | Тестирование модели ядра |  | 0.2w | 2024-05-03 15:12 A | 2024-05-06 15:12 A | 14 | 100% |  | 2024-04-08 12:49 | 2024-04-15 12:49 | 1w |  |  | Программист#1; Программист-стажер; Программист#2; Программист#3; Программист#4; Ведущий программист; Программист-стажер 2 | 40h | 40h | 588 | 330 | 588 |
| 16 | 4.4 | Создание рабочей версии ядра |  | 4.94w | 2024-05-06 15:12 A | 2024-06-13 11:59 | 15 | 9% | 4.47w | 2024-04-15 12:49 | 2024-06-11 09:12 | 7.11w | 4.84d | 7.09d | Ведущий программист; Программист#1; Программист#2; Программист#3; Программист#4; Программист-стажер; Программист-стажер 2 | 1200h | 112.72h | 7,722.59 | 9,413.59 | 1,090.25 |
| 17 | 5 | Создание мультимедиа - наполнения |  | 6w | 2024-04-10 14:00 A | 2024-05-30 15:00 | 3 | 57% | 2.58w | 2024-04-08 15:00 | 2024-05-28 12:00 | 6w | 37.5d |  | Мультимедиа-корреспондент; Специализированное ПО | 240h | 137h | 6,112 | 740 | 5,772.1 |
| 18 | 6 | Создание справочной системы |  | 2w | 2024-07-01 15:59 | 2024-07-15 16:59 | 7 |  |  | 2024-07-02 16:12 | 2024-07-17 09:12 | 2w | 6.25d | 13.75d | Технический писатель | 80h |  | 420 | 420 |  |
| 19 | 7 | **Создание руководства пользователя** |  | 17.25d | 2024-06-05 11:59 | 2024-07-01 14:59 | 7FS-10d |  |  | 2024-06-06 14:12 | 2024-07-02 16:12 | 17.25d | 4.84d | 7.09d |  | 160h |  | 1,010 | 1,010 |  |
| 20 | 7.1 | Разработка дизайна руководства |  | 1w | 2024-06-05 11:59 | 2024-06-13 11:59 |  |  |  | 2024-06-06 14:12 | 2024-06-14 14:12 | 1w | 4.84d | 0d | Художник-дизайнер | 40h |  | 390 | 390 |  |
| 21 | 7.2 | Написание руководства пользователя |  | 3w | 2024-06-07 11:59 | 2024-07-01 14:59 | 20SS+2d |  |  | 2024-06-10 14:12 | 2024-07-02 16:12 | 3w | 4.84d | 0d | Технический писатель | 120h |  | 620 | 620 |  |
| 22 | 8 | **Создание web - сайта и поддержка** |  | 23.25d | 2024-06-07 11:59 | 2024-07-11 14:59 |  |  |  | 2024-06-10 14:12 | 2024-07-15 09:12 | 23.5d | 4.84d | 0d |  | 248h |  | 2,106 | 2,106 |  |
| 23 | 8.1 | Разработка структуры сайта |  | 1d | 2024-06-07 11:59 | 2024-06-10 11:59 | 21SS |  |  | 2024-06-10 14:12 | 2024-06-11 14:12 | 1d | 4.84d | 0d | Web-дизайнер | 8h |  | 106 | 106 |  |
| 24 | 8.2 | Разработка дизайна сайта |  | 1.4w | 2024-06-10 11:59 | 2024-06-20 11:59 | 23 |  |  | 2024-06-11 14:12 | 2024-06-21 15:12 | 1.43w | 4.84d | 0d | 3D аниматор; Web-дизайнер; Художник-дизайнер | 120h |  | 1,110 | 1,110 |  |
| 25 | 8.3 | Наполнение сайта |  | 3w | 2024-06-20 11:59 | 2024-07-11 14:59 | 24 |  |  | 2024-06-21 15:12 | 2024-07-15 09:12 | 3w | 4.84d | 7.09d | Web-дизайнер | 120h |  | 890 | 890 |  |
| 26 | 9 | Тестирование сайта |  | 1.73w | 2024-07-04 14:59 | 2024-07-17 11:17 | 22FS-1w |  |  | 2024-07-08 09:12 | 2024-07-24 10:38 | 2.44w | 4.84d | 0d | Ведущий программист; Программист#1; Программист#2; Программист#3; Программист#4; Программист-стажер; Программист-стажер 2 | 480h |  | 3,348.46 | 3,945.15 |  |
| 27 | 10 | Сдача сайта в эксплуатацию | milestone | 0w | 2024-07-17 11:17 | 2024-07-17 11:17 | 26 |  |  | 2024-07-24 10:38 | 2024-07-24 10:38 | 0w | 4.84d | 7.09d |  |  |  |  |  |  |

| ID | WBS | Task | Type | Duration | Start | Finish | Complete | Remaining | Baseline start | Baseline finish | Baseline duration | Total slack | Constraint | Resources | Work | Actual work | Cost | Baseline cost | Actual cost |
| --- | --- | --- | --- | --- | --- | --- | --- | --- | --- | --- | --- | --- | --- | --- | --- | --- | --- | --- | --- |
| 28 | 11 | **Совещание** |  | 93.12d | 2024-03-06 09:00 A | 2024-07-24 10:00 | 47% | 49.01d | 2024-03-06 09:00 | 2024-07-24 10:00 | 93.12d | 0d |  |  | 132.7h | 63h | 1,153 | 1,159 | 549 |
| 29 | 11.1 | Совещание 1 | manual | 1h | 2024-03-06 09:00 A | 2024-03-06 10:00 A | 100% |  | 2024-03-06 09:00 | 2024-03-06 10:00 | 1h |  | start no earlier than 2024-03-06 09:00 | 3D аниматор; Web-дизайнер; Ведущий программист; Мультимедиа-корреспондент; Системный аналитик; Технический писатель; Художник-дизайнер | 7h | 7h | 61 | 61 | 61 |
| 30 | 11.2 | Совещание 2 |  | 1h | 2024-03-13 09:00 A | 2024-03-13 10:00 A | 100% |  | 2024-03-13 09:00 | 2024-03-13 10:00 | 1h |  | start no earlier than 2024-03-13 09:00 | 3D аниматор; Web-дизайнер; Ведущий программист; Мультимедиа-корреспондент; Системный аналитик; Технический писатель; Художник-дизайнер | 7h | 7h | 61 | 61 | 61 |
| 31 | 11.3 | Совещание 3 | manual | 1h | 2024-03-20 09:00 A | 2024-03-20 10:00 A | 100% |  | 2024-03-20 09:00 | 2024-03-20 10:00 | 1h |  | start no earlier than 2024-03-20 09:00 | 3D аниматор; Web-дизайнер; Ведущий программист; Мультимедиа-корреспондент; Системный аналитик; Технический писатель; Художник-дизайнер | 7h | 7h | 61 | 61 | 61 |
| 32 | 11.4 | Совещание 4 | manual | 1h | 2024-03-27 09:00 A | 2024-03-27 10:00 A | 100% |  | 2024-03-27 09:00 | 2024-03-27 10:00 | 1h |  | start no earlier than 2024-03-27 09:00 | 3D аниматор; Web-дизайнер; Ведущий программист; Мультимедиа-корреспондент; Системный аналитик; Технический писатель; Художник-дизайнер | 7h | 7h | 61 | 61 | 61 |
| 33 | 11.5 | Совещание 5 | manual | 1h | 2024-04-03 09:00 A | 2024-04-03 10:00 A | 100% |  | 2024-04-03 09:00 | 2024-04-03 10:00 | 1h |  | start no earlier than 2024-04-03 09:00 | 3D аниматор; Web-дизайнер; Ведущий программист; Мультимедиа-корреспондент; Системный аналитик; Технический писатель; Художник-дизайнер | 7h | 7h | 61 | 61 | 61 |
| 34 | 11.6 | Совещание 6 | manual | 1h | 2024-04-10 09:00 A | 2024-04-10 10:00 A | 100% |  | 2024-04-10 09:00 | 2024-04-10 10:00 | 1h |  | start no earlier than 2024-04-10 09:00 | 3D аниматор; Web-дизайнер; Ведущий программист; Мультимедиа-корреспондент; Системный аналитик; Технический писатель; Художник-дизайнер | 7h | 7h | 61 | 61 | 61 |
| 35 | 11.7 | Совещание 7 | manual | 1h | 2024-04-17 09:00 A | 2024-04-17 10:00 A | 100% |  | 2024-04-17 09:00 | 2024-04-17 10:00 | 1h |  | start no earlier than 2024-04-17 09:00 | 3D аниматор; Web-дизайнер; Ведущий программист; Мультимедиа-корреспондент; Системный аналитик; Технический писатель; Художник-дизайнер | 7h | 7h | 61 | 61 | 61 |
| 36 | 11.8 | Совещание 8 | manual | 1h | 2024-04-24 09:00 A | 2024-04-24 10:00 A | 100% |  | 2024-04-24 09:00 | 2024-04-24 10:00 | 1h |  | start no earlier than 2024-04-24 09:00 | 3D аниматор; Web-дизайнер; Ведущий программист; Мультимедиа-корреспондент; Системный аналитик; Технический писатель; Художник-дизайнер | 7h | 7h | 61 | 61 | 61 |
| 37 | 11.9 | Совещание 10 | manual | 1h | 2024-05-08 09:00 A | 2024-05-08 10:00 A | 100% |  | 2024-05-08 09:00 | 2024-05-08 10:00 | 1h |  | start no earlier than 2024-05-08 09:00 | 3D аниматор; Web-дизайнер; Ведущий программист; Мультимедиа-корреспондент; Системный аналитик; Технический писатель; Художник-дизайнер | 7h | 7h | 61 | 61 | 61 |
| 38 | 11.10 | Совещание 11 | manual | 1h | 2024-05-15 09:00 | 2024-05-15 10:00 |  |  | 2024-05-15 09:00 | 2024-05-15 10:00 | 1h |  | start no earlier than 2024-05-15 09:00 | 3D аниматор; Web-дизайнер; Ведущий программист; Мультимедиа-корреспондент; Системный аналитик; Технический писатель; Художник-дизайнер | 7h |  | 61 | 61 |  |
| 39 | 11.11 | Совещание 12 | manual | 1h | 2024-05-22 09:00 | 2024-05-22 10:00 |  |  | 2024-05-22 09:00 | 2024-05-22 10:00 | 1h |  | start no earlier than 2024-05-22 09:00 | 3D аниматор; Web-дизайнер; Ведущий программист; Мультимедиа-корреспондент; Системный аналитик; Технический писатель; Художник-дизайнер | 7h |  | 61 | 61 |  |
| 40 | 11.12 | Совещание 13 | manual | 1h | 2024-05-29 09:00 | 2024-05-29 10:00 |  |  | 2024-05-29 09:00 | 2024-05-29 10:00 | 1h |  | start no earlier than 2024-05-29 09:00 | 3D аниматор; Web-дизайнер; Ведущий программист; Мультимедиа-корреспондент; Системный аналитик; Технический писатель; Художник-дизайнер | 7h |  | 61 | 61 |  |
| 41 | 11.13 | Совещание 14 | manual | 1h | 2024-06-05 09:00 | 2024-06-05 10:00 |  |  | 2024-06-05 09:00 | 2024-06-05 10:00 | 1h |  | start no earlier than 2024-06-05 09:00 | 3D аниматор; Web-дизайнер; Ведущий программист; Мультимедиа-корреспондент; Системный аналитик; Технический писатель; Художник-дизайнер | 7h |  | 61 | 61 |  |
| 42 | 11.14 | Совещание 16 | manual | 1h | 2024-06-19 09:00 | 2024-06-19 10:00 |  |  | 2024-06-19 09:00 | 2024-06-19 10:00 | 1h |  | start no earlier than 2024-06-19 09:00 | 3D аниматор; Web-дизайнер; Ведущий программист; Мультимедиа-корреспондент; Системный аналитик; Технический писатель; Художник-дизайнер | 7h |  | 61 | 61 |  |
| 43 | 11.15 | Совещание 17 | manual | 1h | 2024-06-26 09:00 | 2024-06-26 10:00 |  |  | 2024-06-26 09:00 | 2024-06-26 10:00 | 1h |  | start no earlier than 2024-06-26 09:00 | 3D аниматор; Web-дизайнер; Ведущий программист; Мультимедиа-корреспондент; Системный аналитик [70%]; Технический писатель; Художник-дизайнер | 6.7h |  | 55 | 61 |  |
| 44 | 11.16 | Совещание 18 | manual | 1h | 2024-07-03 09:00 | 2024-07-03 10:00 |  |  | 2024-07-03 09:00 | 2024-07-03 10:00 | 1h |  | start no earlier than 2024-07-03 09:00 | 3D аниматор; Web-дизайнер; Ведущий программист; Мультимедиа-корреспондент; Системный аналитик; Технический писатель; Художник-дизайнер | 7h |  | 61 | 61 |  |
| 45 | 11.17 | Совещание 19 | manual | 1h | 2024-07-10 09:00 | 2024-07-10 10:00 |  |  | 2024-07-10 09:00 | 2024-07-10 10:00 | 1h |  | start no earlier than 2024-07-10 09:00 | 3D аниматор; Web-дизайнер; Ведущий программист; Мультимедиа-корреспондент; Системный аналитик; Технический писатель; Художник-дизайнер | 7h |  | 61 | 61 |  |
| 46 | 11.18 | Совещание 20 | manual | 1h | 2024-07-17 09:00 | 2024-07-17 10:00 |  |  | 2024-07-17 09:00 | 2024-07-17 10:00 | 1h |  | start no earlier than 2024-07-17 09:00 | 3D аниматор; Web-дизайнер; Ведущий программист; Мультимедиа-корреспондент; Системный аналитик; Технический писатель; Художник-дизайнер | 7h |  | 61 | 61 |  |
| 47 | 11.19 | Совещание 21 | manual | 1h | 2024-07-24 09:00 | 2024-07-24 10:00 |  |  | 2024-07-24 09:00 | 2024-07-24 10:00 | 1h |  | start no earlier than 2024-07-24 09:00 | 3D аниматор; Web-дизайнер; Ведущий программист; Мультимедиа-корреспондент; Системный аналитик; Технический писатель; Художник-дизайнер | 7h |  | 61 | 61 |  |
